# Project MacOS

Schedule from MS Project, 2019-02-25 to 2019-04-26.

## Calendars

- Стандартный: Mon-Fri 09:00-13:00, 14:00-18:00; Sat-Sun off. Exceptions (off unless hours are given): 2019-02-25 to 2019-04-26 09:00-13:00, 14:00-18:00 (My).

## Resources

| Resource |
| --- |
| Stas Bespalov |
| Nikita Dik |
| Stas Bespalov, Nikita Dik |

## Schedule

| ID | WBS | Task | Type | Duration | Start | Finish | Predecessors | Constraint | Resources | Work |
| --- | --- | --- | --- | --- | --- | --- | --- | --- | --- | --- |
| 1 | 1 | **MacOS Stream** |  | 60.5d | 2019-02-25 18:00 | 2019-04-26 22:00 |  |  |  | 627.92h |
| 2 | 1.1 | Research | manual | 22d | 2019-02-26 16:00 | 2019-03-20 16:00 |  | start no earlier than 2019-02-26 16:00 | Nikita Dik; Stas Bespalov | 270.62h |
| 3 | 1.2 | Prototype | manual | 3.5d | 2019-03-21 08:00 | 2019-03-24 12:00 | 2 | start no earlier than 2019-03-21 08:00 | Nikita Dik; Stas Bespalov | 30h |
| 4 | 1.3 | **Development ( time including documentation and TDD )** |  | 25.5d | 2019-03-25 09:00 | 2019-04-18 22:00 | 3 |  |  | 327.3h |
| 5 | 1.3.1 | **Control** |  | 7.88d | 2019-03-25 11:00 | 2019-04-01 19:00 |  |  |  | 46.8h |
| 6 | 1.3.1.1 | Receiving commands on ios | manual | 5d | 2019-03-25 06:00 | 2019-03-29 05:00 |  |  | Stas Bespalov | 24.6h |
| 7 | 1.3.1.2 | Command implementation | manual | 2.5d | 2019-03-29 16:00 | 2019-04-01 11:00 | 6 |  | Stas Bespalov | 15.2h |
| 8 | 1.3.1.3 | Code review | manual | 0.38d | 2019-04-01 08:00 | 2019-04-01 11:00 |  |  | Nikita Dik | 3h |
| 9 | 1.3.1.4 | Correction after review | manual | 0.5d | 2019-04-01 14:00 | 2019-04-01 18:00 |  |  | Stas Bespalov | 4h |
| 10 | 1.3.2 | **Data transfer** |  | 18.5d | 2019-03-25 18:00 | 2019-04-13 13:00 |  |  |  | 160h |
| 11 | 1.3.2.1 | **Server** |  | 16.5d | 2019-03-25 18:00 | 2019-04-10 22:00 |  |  |  | 136h |
| 12 | 1.3.2.1.1 | Deep research (Reactor, SocketAcceptor, TCP and UDP. Image scaling) | manual | 10.5d | 2019-03-26 09:00 | 2019-04-04 22:00 |  |  | Nikita Dik | 84h |
| 13 | 1.3.2.1.2 | **Primary tasks** |  | 5.5d | 2019-04-04 18:00 | 2019-04-09 22:00 |  |  |  | 52h |
| 14 | 1.3.2.1.2.1 | 1 to 1 TCP Connection Acceptor (Scalable) | manual | 4.5d | 2019-04-04 18:00 | 2019-04-08 22:00 |  |  | Nikita Dik | 36h |
| 15 | 1.3.2.1.2.2 | TCP stream "packet" framer ( for user input and dynamically sized images) | manual | 0.5d | 2019-04-08 18:00 | 2019-04-08 22:00 |  |  | Nikita Dik | 4h |
| 16 | 1.3.2.1.2.3 | TCP message receiver and de-framer | manual | 0.5d | 2019-04-08 18:00 | 2019-04-08 22:00 |  |  | Nikita Dik | 4h |
| 17 | 1.3.2.1.2.4 | InputReceiver | manual | 0.5d | 2019-04-09 18:00 | 2019-04-09 22:00 |  |  | Nikita Dik | 4h |
| 18 | 1.3.2.1.2.5 | InputManager | manual | 0.5d | 2019-04-09 18:00 | 2019-04-09 22:00 |  |  | Nikita Dik | 4h |
| 19 | 1.3.2.2 | **Client** |  | 2.5d | 2019-04-09 18:00 | 2019-04-12 13:00 |  |  |  | 12h |
| 20 | 1.3.2.2.1 | Connection/reconnection | manual | 0.5d | 2019-04-09 18:00 | 2019-04-09 22:00 |  |  | Nikita Dik | 4h |
| 21 | 1.3.2.2.2 | Video frame receiver | manual | 0.5d | 2019-04-10 09:00 | 2019-04-10 13:00 |  |  | Nikita Dik | 4h |
| 22 | 1.3.2.2.3 | Input events sender | manual | 0.5d | 2019-04-10 18:00 | 2019-04-10 22:00 |  |  | Nikita Dik | 4h |
| 23 | 1.3.2.3 | Code review | manual | 0.5d | 2019-04-10 18:00 | 2019-04-10 22:00 |  | start no earlier than 2019-04-10 18:00 | Stas Bespalov | 4h |
| 24 | 1.3.2.4 | Correction after review | manual | 1d | 2019-04-11 14:00 | 2019-04-11 22:00 |  |  | Nikita Dik | 8h |

| ID | WBS | Task | Type | Duration | Start | Finish | Predecessors | Resources | Work |
| --- | --- | --- | --- | --- | --- | --- | --- | --- | --- |
| 25 | 1.3.3 | **Stream Display** |  | 2.75d | 2019-04-12 08:30 | 2019-04-13 23:30 |  |  | 34h |
| 26 | 1.3.3.1 | ScreenGrabber | manual | 1.75d | 2019-04-12 08:30 | 2019-04-12 23:30 |  | Nikita Dik | 14h |
| 27 | 1.3.3.2 | **Rendering** |  | 0.5d | 2019-04-12 18:00 | 2019-04-12 22:00 |  |  | 4h |
| 28 | 1.3.3.2.1 | Bytes to image converter | manual | 0.5d | 2019-04-12 18:00 | 2019-04-12 22:00 |  | Nikita Dik | 4h |
| 29 | 1.3.3.3 | Code review | manual | 0.5d | 2019-04-12 18:00 | 2019-04-12 22:00 |  | Stas Bespalov | 4h |
| 30 | 1.3.3.4 | Correction after review | manual | 1.5d | 2019-04-12 18:00 | 2019-04-13 22:00 |  | Nikita Dik | 12h |
| 31 | 1.3.4 | **Additional Tasks** |  | 5.5d | 2019-04-13 18:00 | 2019-04-18 22:00 |  |  | 44h |
| 32 | 1.3.4.1 | Image encoding / decoding | manual | 2.5d | 2019-04-13 18:00 | 2019-04-15 22:00 |  | Nikita Dik | 20h |
| 33 | 1.3.4.2 | UDP video streamer | manual | 1.5d | 2019-04-15 18:00 | 2019-04-17 13:00 |  | Nikita Dik | 12h |
| 34 | 1.3.4.3 | Provide ability to have multiple TCP clients and UDP multicast in the future | manual | 1.5d | 2019-04-17 18:00 | 2019-04-18 22:00 |  | Nikita Dik | 12h |
| 35 | 1.3.5 | Presentation (paralel to dev) | manual | 3d | 2019-04-14 18:00 | 2019-04-17 18:00 |  | Stas Bespalov, Nikita Dik | 24h |
| 36 | 1.3.6 | Documentation re-read | manual | 1.5d | 2019-04-17 18:00 | 2019-04-18 22:00 |  | Stas Bespalov, Nikita Dik | 12h |
| 37 | 1.3.7 | User Interface | manual | 2.5d | 2019-04-03 18:00 | 2019-04-06 13:00 | 5 | Stas Bespalov | 6.5h |
| 38 | 2 | general refinement | manual | 7d | 2019-04-18 09:00 | 2019-04-24 18:00 |  | Nikita Dik; Stas Bespalov | 28h |
